# NAC_Project_2007

Schedule from MS Project, 2016-09-01 to 2016-10-21, costs in R$.
FIAP VSTP

## Calendars

- Standard: Mon-Fri 08:00-12:00, 13:00-17:00; Sat-Sun off.

## Resources

| Resource | Notes |
| --- | --- |
| Robson Lisboa Pires | Responsável por infra estrutura e SO |
| Mario Pereira Cicala | Responsável pelo banco de dados |
| Eder Rocha | Responsável pela programação na plataforma android |
| Vinicius Cassiano | Responsável pelo planejamento das sprints e gerenciamento de tarefas |
| Bruno Arcelino | Responsável pela programação do site |

## Schedule

| ID | WBS | Task | Type | Duration | Start | Finish | Predecessors | Total slack | Resources | Work | Cost |
| --- | --- | --- | --- | --- | --- | --- | --- | --- | --- | --- | --- |
| 1 | 1 | **Projeto Device 3SIR** |  | 37d? | 2016-09-01 08:00 | 2016-10-21 17:00 |  | 0d |  | 900h | 24,388.6 |
| 2 | 1.1 | **Montar backlog inicial do produto** |  | 1d | 2016-09-01 08:00 | 2016-09-01 17:00 |  | 0d |  | 8h | 180 |
| 3 | 1.1.1 | Listar requisitos |  | 0.5d | 2016-09-01 08:00 | 2016-09-01 12:00 |  | 0d | Vinicius Cassiano | 4h | 90 |
| 4 | 1.1.2 | Atribuir pesos para complexidade |  | 0.5d | 2016-09-01 13:00 | 2016-09-01 17:00 | 3 | 0d | Vinicius Cassiano | 4h | 90 |
| 5 | 1.1.3 | Backlog inicial de produto construido | milestone | 0d | 2016-09-01 08:00 | 2016-09-01 08:00 |  | 1d |  |  |  |
| 6 | 1.2 | **Montar o plano de Sprints** |  | 1d? | 2016-09-01 17:00 | 2016-09-02 17:00 | 2 | 0d |  | 16h | 342 |
| 7 | 1.2.1 | Distruibuir itens de produto por Sprints |  | 1d? | 2016-09-02 08:00 | 2016-09-02 17:00 |  | 0d | Robson Lisboa Pires; Vinicius Cassiano | 16h | 342 |
| 8 | 1.2.2 | Total de Sprints confirmado | milestone | 0d | 2016-09-01 17:00 | 2016-09-01 17:00 |  | 1d |  |  |  |
| 9 | 1.3 | **Sprint 1** |  | 10d | 2016-09-02 17:00 | 2016-09-16 17:00 | 6 | 0d |  | 254.4h | 6,053 |
| 10 | 1.3.1 | **Diagrama UML** |  | 3d | 2016-09-05 08:00 | 2016-09-07 17:00 |  | 0d |  | 72h | 1,761 |
| 11 | 1.3.1.1 | Modelagem de classes |  | 2d | 2016-09-05 08:00 | 2016-09-06 17:00 |  | 0d | Bruno Arcelino; Eder Rocha; Mario Pereira Cicala; Robson Lisboa Pires | 64h | 1,581 |
| 12 | 1.3.1.2 | Validação com patrocinadores |  | 1d | 2016-09-07 08:00 | 2016-09-07 17:00 | 11 | 0d | Mario Pereira Cicala | 8h | 180 |
| 13 | 1.3.1.3 | Diagrama UML pronto | milestone | 0d | 2016-09-07 17:00 | 2016-09-07 17:00 | 12 | 0d |  |  |  |
| 14 | 1.3.2 | **Modelo inicial da documentação** |  | 3.5d | 2016-09-02 17:00 | 2016-09-08 12:00 |  | 0d |  | 4h | 140 |
| 15 | 1.3.2.1 | Criar a base da documentação (Criar sumário, títulos, objetivo, conclusão e etc) |  | 0.2d | 2016-09-08 08:00 | 2016-09-08 09:36 | 10 | 0d | Robson Lisboa Pires | 1.6h | 52 |
| 16 | 1.3.2.2 | Verificar erros ortográficos |  | 0.1d | 2016-09-08 09:36 | 2016-09-08 10:24 | 15 | 0d | Robson Lisboa Pires | 0.8h | 36 |
| 17 | 1.3.2.3 | Formatar no padrão ABNT |  | 0.2d | 2016-09-08 10:24 | 2016-09-08 12:00 | 16 | 0d | Robson Lisboa Pires | 1.6h | 52 |
| 18 | 1.3.2.4 | Modelo inicial da documentação pronto | milestone | 0d | 2016-09-02 17:00 | 2016-09-02 17:00 |  | 3.5d |  |  |  |
| 19 | 1.3.3 | **Modelos do Banco de dados** |  | 4.5d | 2016-09-02 17:00 | 2016-09-09 12:00 |  | 0d |  | 16h | 400 |
| 20 | 1.3.3.1 | Modelagem do diagrama lógico do BD |  | 0.5d | 2016-09-08 13:00 | 2016-09-08 17:00 | 14 | 0d | Mario Pereira Cicala; Robson Lisboa Pires | 8h | 200 |
| 21 | 1.3.3.2 | Modelagem do diagrama relacional do BD |  | 0.5d | 2016-09-09 08:00 | 2016-09-09 12:00 | 20 | 0d | Mario Pereira Cicala; Robson Lisboa Pires | 8h | 200 |
| 22 | 1.3.3.3 | Modelos do Bancode de dados pronto | milestone | 0d | 2016-09-02 17:00 | 2016-09-02 17:00 |  | 4.5d |  |  |  |
| 23 | 1.3.4 | **Provisionamento do servidor** |  | 4.8d | 2016-09-02 17:00 | 2016-09-09 15:24 |  | 0d |  | 2.4h | 88 |
| 24 | 1.3.4.1 | Dimensionamento de recursos de hardware |  | 0.1d | 2016-09-09 13:00 | 2016-09-09 13:48 | 19 | 0d | Robson Lisboa Pires | 0.8h | 36 |
| 25 | 1.3.4.2 | Alocação de recursos de hardware para VM |  | 0.2d | 2016-09-09 13:48 | 2016-09-09 15:24 | 24 | 0d | Robson Lisboa Pires | 1.6h | 52 |
| 26 | 1.3.4.3 | Provisionamento do servidor pronto | milestone | 0d | 2016-09-02 17:00 | 2016-09-02 17:00 |  | 4.8d |  |  |  |

| ID | WBS | Task | Type | Duration | Start | Finish | Predecessors | Total slack | Free slack | Resources | Work | Cost |
| --- | --- | --- | --- | --- | --- | --- | --- | --- | --- | --- | --- | --- |
| 27 | 1.3.5 | **Banco de dados Oracle 11g** |  | 5d | 2016-09-02 17:00 | 2016-09-09 17:00 |  | 0d |  |  | 1.6h | 72 |
| 28 | 1.3.5.1 | Instalar o SGB Oracle 11g |  | 0.1d | 2016-09-09 15:24 | 2016-09-09 16:12 | 23 | 0d |  | Robson Lisboa Pires | 0.8h | 36 |
| 29 | 1.3.5.2 | Testar o SGB |  | 0.1d | 2016-09-09 16:12 | 2016-09-09 17:00 | 28 | 0d |  | Mario Pereira Cicala | 0.8h | 36 |
| 30 | 1.3.5.3 | Banco de dados Oracle 11g pronto | milestone | 0d | 2016-09-02 17:00 | 2016-09-02 17:00 |  | 5d |  |  |  |  |
| 31 | 1.3.6 | **Servidor ASP.NET** |  | 5.2d | 2016-09-02 17:00 | 2016-09-12 09:36 |  | 4.8d |  |  | 1.6h | 72 |
| 32 | 1.3.6.1 | Criação do site ASP.NET no IIS |  | 0.1d | 2016-09-12 08:00 | 2016-09-12 08:48 | 27 | 4.8d | 0d | Robson Lisboa Pires | 0.8h | 36 |
| 33 | 1.3.6.2 | Instalar as dependências no servidor |  | 0.1d | 2016-09-12 08:48 | 2016-09-12 09:36 | 32 | 4.8d |  | Robson Lisboa Pires | 0.8h | 36 |
| 34 | 1.3.6.3 | Servidor ASP.NET pronto | milestone | 0d | 2016-09-02 17:00 | 2016-09-02 17:00 |  | 10d |  |  |  |  |
| 35 | 1.3.7 | **Script de criação da tabelas e usuários** |  | 7d | 2016-09-02 17:00 | 2016-09-13 17:00 |  | 0d |  |  | 20.8h | 496 |
| 36 | 1.3.7.1 | Programação dos schemas de tabelas |  | 1d | 2016-09-12 08:00 | 2016-09-12 17:00 | 19, 27 | 0d |  | Mario Pereira Cicala | 8h | 180 |
| 37 | 1.3.7.2 | Teste dos schemas |  | 0.4d | 2016-09-13 08:00 | 2016-09-13 11:12 | 36 | 0d |  | Mario Pereira Cicala | 3.2h | 84 |
| 38 | 1.3.7.3 | Teste de desempenho de hardware |  | 0.6d | 2016-09-13 11:12 | 2016-09-13 17:00 | 37 | 0d |  | Mario Pereira Cicala; Robson Lisboa Pires | 9.6h | 232 |
| 39 | 1.3.7.4 | Script de criação da tabelas e usuários pronto | milestone | 0d | 2016-09-02 17:00 | 2016-09-02 17:00 |  | 7d |  |  |  |  |
| 40 | 1.3.8 | **Script das PROCEDURES** |  | 10d | 2016-09-02 17:00 | 2016-09-16 17:00 |  | 0d |  |  | 56h | 1,476 |
| 41 | 1.3.8.1 | Programação das PROCEDURES PL/SQL |  | 1d | 2016-09-14 08:00 | 2016-09-14 17:00 | 35 | 0d |  | Bruno Arcelino; Mario Pereira Cicala | 16h | 432 |
| 42 | 1.3.8.2 | Teste das PROCEDURES |  | 1d | 2016-09-15 08:00 | 2016-09-15 17:00 | 41 | 0d |  | Bruno Arcelino; Mario Pereira Cicala | 16h | 432 |
| 43 | 1.3.8.3 | Teste de desempenho de hardware |  | 1d | 2016-09-16 08:00 | 2016-09-16 17:00 | 42 | 0d |  | Bruno Arcelino; Mario Pereira Cicala; Robson Lisboa Pires | 24h | 612 |
| 44 | 1.3.8.4 | Script das PROCEDURES pronto | milestone | 0d | 2016-09-02 17:00 | 2016-09-02 17:00 |  | 10d |  |  |  |  |
| 45 | 1.3.9 | **Report Gerencial Semanal** |  | 10d | 2016-09-05 08:00 | 2016-09-16 17:00 |  | 0d |  |  | 80h | 1,548 |
| 46 | 1.3.9.1 | **Reporte semana 1** |  | 5d | 2016-09-05 08:00 | 2016-09-09 17:00 |  | 0d |  |  | 40h | 774 |
| 47 | 1.3.9.1.1 | Coletar dados de Burndown e KANBAN do projeto |  | 4d | 2016-09-05 08:00 | 2016-09-08 17:00 |  | 0d |  | Vinicius Cassiano | 32h | 594 |
| 48 | 1.3.9.1.2 | Elaborar status report |  | 0.5d | 2016-09-09 08:00 | 2016-09-09 12:00 | 47 | 0d |  | Vinicius Cassiano | 4h | 90 |
| 49 | 1.3.9.1.3 | Realizar reunião com stakeholders |  | 0.5d | 2016-09-09 13:00 | 2016-09-09 17:00 | 48 | 0d |  | Vinicius Cassiano | 4h | 90 |
| 50 | 1.3.9.1.4 | Ata da reunião gerencial | milestone | 0d | 2016-09-09 17:00 | 2016-09-09 17:00 | 49 | 0d |  |  |  |  |

| ID | WBS | Task | Type | Duration | Start | Finish | Predecessors | Total slack | Free slack | Resources | Work | Cost |
| --- | --- | --- | --- | --- | --- | --- | --- | --- | --- | --- | --- | --- |
| 51 | 1.3.9.2 | **Reporte semana 2** |  | 5d | 2016-09-12 08:00 | 2016-09-16 17:00 | 46 | 0d |  |  | 40h | 774 |
| 52 | 1.3.9.2.1 | Coletar dados de Burndown e KANBAN do projeto |  | 4d | 2016-09-12 08:00 | 2016-09-15 17:00 |  | 0d |  | Vinicius Cassiano | 32h | 594 |
| 53 | 1.3.9.2.2 | Elaborar status report |  | 0.5d | 2016-09-16 08:00 | 2016-09-16 12:00 | 52 | 0d |  | Vinicius Cassiano | 4h | 90 |
| 54 | 1.3.9.2.3 | Realizar reunião com stakeholders |  | 0.5d | 2016-09-16 13:00 | 2016-09-16 17:00 | 53 | 0d |  | Vinicius Cassiano | 4h | 90 |
| 55 | 1.3.9.2.4 | Ata da reunião gerencial | milestone | 0d | 2016-09-16 17:00 | 2016-09-16 17:00 | 54 | 0d |  |  |  |  |
| 56 | 1.4 | **Sprint 2** |  | 10d | 2016-09-16 17:00 | 2016-09-30 17:00 | 9 | 0d |  |  | 248h | 6,709.4 |
| 57 | 1.4.1 | **Layout do website** |  | 1d | 2016-09-16 17:00 | 2016-09-19 17:00 |  | 0d |  |  | 9.6h | 336.4 |
| 58 | 1.4.1.1 | Criação do design das páginas |  | 0.9d | 2016-09-19 08:00 | 2016-09-19 16:12 | 9 | 0d |  | Eder Rocha | 7.2h | 205 |
| 59 | 1.4.1.2 | Validação de facilidade de navegação |  | 0.1d | 2016-09-19 16:12 | 2016-09-19 17:00 | 58 | 0d |  | Bruno Arcelino; Eder Rocha; Mario Pereira Cicala | 2.4h | 131.4 |
| 60 | 1.4.1.3 | Layout do website pronto | milestone | 0d | 2016-09-16 17:00 | 2016-09-16 17:00 |  | 1d |  |  |  |  |
| 61 | 1.4.2 | **Relatórios de consulta pré-definidos** |  | 3d | 2016-09-16 17:00 | 2016-09-21 17:00 |  | 0d |  |  | 28h | 732 |
| 62 | 1.4.2.1 | Criação das views de relatórios |  | 1d | 2016-09-20 08:00 | 2016-09-20 17:00 | 9, 57 | 0d |  | Bruno Arcelino; Mario Pereira Cicala | 16h | 432 |
| 63 | 1.4.2.2 | Teste de relatório |  | 0.5d | 2016-09-21 08:00 | 2016-09-21 12:00 | 62 | 0d |  | Mario Pereira Cicala | 4h | 100 |
| 64 | 1.4.2.3 | Teste de desempenho de hardware |  | 0.5d | 2016-09-21 13:00 | 2016-09-21 17:00 | 63 | 0d |  | Mario Pereira Cicala; Robson Lisboa Pires | 8h | 200 |
| 65 | 1.4.2.4 | Relatórios de consulta pré-definidos pronto | milestone | 0d | 2016-09-16 17:00 | 2016-09-16 17:00 |  | 3d |  |  |  |  |
| 66 | 1.4.3 | **Documentação do Banco de dados** |  | 4.3d | 2016-09-16 17:00 | 2016-09-23 10:24 |  | 5.7d |  |  | 10.4h | 268 |
| 67 | 1.4.3.1 | Documentar Banco de dados |  | 1d | 2016-09-22 08:00 | 2016-09-22 17:00 | 61 | 5.7d | 0d | Mario Pereira Cicala | 8h | 180 |
| 68 | 1.4.3.2 | Verificar erros ortográficos |  | 0.2d | 2016-09-23 08:00 | 2016-09-23 09:36 | 67 | 5.7d | 0d | Mario Pereira Cicala | 1.6h | 52 |
| 69 | 1.4.3.3 | Formatar no padrão ABNT |  | 0.1d | 2016-09-23 09:36 | 2016-09-23 10:24 | 68 | 5.7d |  | Mario Pereira Cicala | 0.8h | 36 |
| 70 | 1.4.3.4 | Documentação do Banco de dados pronto | milestone | 0d | 2016-09-16 17:00 | 2016-09-16 17:00 |  | 10d |  |  |  |  |
| 71 | 1.4.4 | **Servidor de FTP** |  | 0.3d | 2016-09-16 17:00 | 2016-09-19 10:24 |  | 9.7d |  |  | 2.4h | 128 |
| 72 | 1.4.4.1 | Instalação do IIS |  | 0.05d | 2016-09-19 08:00 | 2016-09-19 08:24 | 9 | 9.7d | 0d | Robson Lisboa Pires | 0.4h | 28 |
| 73 | 1.4.4.2 | Configuração do servidor FTP |  | 0.05d | 2016-09-19 08:24 | 2016-09-19 08:48 | 72 | 9.7d | 0d | Robson Lisboa Pires | 0.4h | 28 |
| 74 | 1.4.4.3 | Criação dos usuários FTP |  | 0.1d | 2016-09-19 08:48 | 2016-09-19 09:36 | 73 | 9.7d | 0d | Robson Lisboa Pires | 0.8h | 36 |
| 75 | 1.4.4.4 | Teste de conexão com o servidor |  | 0.1d | 2016-09-19 09:36 | 2016-09-19 10:24 | 74 | 9.7d |  | Robson Lisboa Pires | 0.8h | 36 |
| 76 | 1.4.4.5 | Servidor de FTP pronto | milestone | 0d | 2016-09-16 17:00 | 2016-09-16 17:00 |  | 10d |  |  |  |  |

| ID | WBS | Task | Type | Duration | Start | Finish | Predecessors | Total slack | Free slack | Resources | Work | Cost |
| --- | --- | --- | --- | --- | --- | --- | --- | --- | --- | --- | --- | --- |
| 77 | 1.4.5 | **Endereço DDNS** |  | 0.4d | 2016-09-16 17:00 | 2016-09-19 11:12 |  | 9.6d |  |  | 3.2h | 164 |
| 78 | 1.4.5.1 | Contratação do serviço DDNS |  | 0.1d | 2016-09-19 08:00 | 2016-09-19 08:48 | 9 | 9.6d | 0d | Robson Lisboa Pires | 0.8h | 36 |
| 79 | 1.4.5.2 | Criação do endereço DDNS |  | 0.1d | 2016-09-19 08:48 | 2016-09-19 09:36 | 78 | 9.6d | 0d | Robson Lisboa Pires | 0.8h | 36 |
| 80 | 1.4.5.3 | Instalação do client DDNS no servidor |  | 0.1d | 2016-09-19 09:36 | 2016-09-19 10:24 | 79 | 9.6d | 0d | Robson Lisboa Pires | 0.8h | 36 |
| 81 | 1.4.5.4 | Teste do endereço DDNS |  | 0.1d | 2016-09-19 10:24 | 2016-09-19 11:12 | 80 | 9.6d |  | Robson Lisboa Pires | 0.8h | 36 |
| 82 | 1.4.5.5 | Endereço DDNS pronto | milestone | 0d | 2016-09-16 17:00 | 2016-09-16 17:00 |  | 10d |  | Robson Lisboa Pires |  | 20 |
| 83 | 1.4.6 | **Serviço de VPN** |  | 0.3d | 2016-09-16 17:00 | 2016-09-19 10:24 |  | 9.7d |  |  | 2.4h | 88 |
| 84 | 1.4.6.1 | Criar uma interface virtual no servidor |  | 0.2d | 2016-09-19 08:00 | 2016-09-19 09:36 | 9 | 9.7d | 0d | Robson Lisboa Pires | 1.6h | 52 |
| 85 | 1.4.6.2 | Associar as VPN a interface |  | 0.1d | 2016-09-19 09:36 | 2016-09-19 10:24 | 84 | 9.7d |  | Robson Lisboa Pires | 0.8h | 36 |
| 86 | 1.4.6.3 | Servidor de VPN pronto | milestone | 0d | 2016-09-16 17:00 | 2016-09-16 17:00 |  | 10d |  |  |  |  |
| 87 | 1.4.7 | **Programação do BackEnd do site** |  | 10d | 2016-09-16 17:00 | 2016-09-30 17:00 |  | 0d |  |  | 112h | 3,445 |
| 88 | 1.4.7.1 | Programação das classes de entidade |  | 0.5d | 2016-09-22 08:00 | 2016-09-22 12:00 | 57, 61 | 0d |  | Bruno Arcelino; Eder Rocha | 8h | 265 |
| 89 | 1.4.7.2 | Testes de instanciamento de objetos |  | 0.4d | 2016-09-22 13:00 | 2016-09-22 16:12 | 88 | 0d |  | Bruno Arcelino; Eder Rocha | 6.4h | 222.6 |
| 90 | 1.4.7.3 | Programação da Web Service (integração com android) |  | 1d | 2016-09-22 16:12 | 2016-09-23 16:12 | 89 | 0d |  | Bruno Arcelino; Eder Rocha | 16h | 477 |
| 91 | 1.4.7.4 | Programação da DAO |  | 1d | 2016-09-23 16:12 | 2016-09-26 16:12 | 90 | 0d |  | Bruno Arcelino; Eder Rocha | 16h | 477 |
| 92 | 1.4.7.5 | Testes de CRUD |  | 0.6d | 2016-09-26 16:12 | 2016-09-27 12:00 | 91 | 0d |  | Bruno Arcelino; Eder Rocha | 9.6h | 307.4 |
| 93 | 1.4.7.6 | Testes de Web Service |  | 1d | 2016-09-27 13:00 | 2016-09-28 12:00 | 92 | 0d |  | Bruno Arcelino; Eder Rocha | 16h | 477 |
| 94 | 1.4.7.7 | Programação das classes de fronteira |  | 0.5d | 2016-09-28 13:00 | 2016-09-28 17:00 | 93 | 0d |  | Bruno Arcelino; Eder Rocha | 8h | 265 |
| 95 | 1.4.7.8 | Programação das classes de controle |  | 1d | 2016-09-29 08:00 | 2016-09-29 17:00 | 94 | 0d |  | Bruno Arcelino; Eder Rocha | 16h | 477 |
| 96 | 1.4.7.9 | Testes dos métodos das classes controle |  | 1d | 2016-09-30 08:00 | 2016-09-30 17:00 | 95 | 0d |  | Bruno Arcelino; Eder Rocha | 16h | 477 |
| 97 | 1.4.7.10 | Programação do BackEnd do site pronto | milestone | 0d | 2016-09-16 17:00 | 2016-09-16 17:00 |  | 10d |  |  |  |  |
| 98 | 1.4.8 | **Report Gerencial Semanal** |  | 10d | 2016-09-19 08:00 | 2016-09-30 17:00 |  | 0d |  |  | 80h | 1,548 |
| 99 | 1.4.8.1 | **Reporte semana 1** |  | 5d | 2016-09-19 08:00 | 2016-09-23 17:00 |  | 0d |  |  | 40h | 774 |
| 100 | 1.4.8.1.1 | Coletar dados de Burndown e KANBAN do projeto |  | 4d | 2016-09-19 08:00 | 2016-09-22 17:00 | 9 | 0d |  | Vinicius Cassiano | 32h | 594 |
| 101 | 1.4.8.1.2 | Elaborar status report |  | 0.5d | 2016-09-23 08:00 | 2016-09-23 12:00 | 100 | 0d |  | Vinicius Cassiano | 4h | 90 |
| 102 | 1.4.8.1.3 | Realizar reunião com stakeholders |  | 0.5d | 2016-09-23 13:00 | 2016-09-23 17:00 | 101 | 0d |  | Vinicius Cassiano | 4h | 90 |
| 103 | 1.4.8.1.4 | Ata da reunião gerencial | milestone | 0d | 2016-09-23 17:00 | 2016-09-23 17:00 | 102 | 0d |  |  |  |  |

| ID | WBS | Task | Type | Duration | Start | Finish | Predecessors | Total slack | Free slack | Resources | Work | Cost |
| --- | --- | --- | --- | --- | --- | --- | --- | --- | --- | --- | --- | --- |
| 104 | 1.4.8.2 | **Reporte semana 2** |  | 5d | 2016-09-26 08:00 | 2016-09-30 17:00 | 99 | 0d |  |  | 40h | 774 |
| 105 | 1.4.8.2.1 | Coletar dados de Burndown e KANBAN do projeto |  | 4d | 2016-09-26 08:00 | 2016-09-29 17:00 |  | 0d |  | Vinicius Cassiano | 32h | 594 |
| 106 | 1.4.8.2.2 | Elaborar status report |  | 0.5d | 2016-09-30 08:00 | 2016-09-30 12:00 | 105 | 0d |  | Vinicius Cassiano | 4h | 90 |
| 107 | 1.4.8.2.3 | Realizar reunião com stakeholders |  | 0.5d | 2016-09-30 13:00 | 2016-09-30 17:00 | 106 | 0d |  | Vinicius Cassiano | 4h | 90 |
| 108 | 1.4.8.2.4 | Ata da reunião gerencial | milestone | 0d | 2016-09-30 17:00 | 2016-09-30 17:00 | 107 | 0d |  |  |  |  |
| 109 | 1.5 | **Sprint 3** |  | 10d | 2016-09-30 17:00 | 2016-10-14 17:00 | 56 | 0d |  |  | 173.6h | 6,442.2 |
| 110 | 1.5.1 | **Programação do FrontEnt do site** |  | 3.9d | 2016-09-30 17:00 | 2016-10-06 16:12 |  | 0d |  |  | 64h | 2,447.6 |
| 111 | 1.5.1.1 | Página inicial do site |  | 0.4d | 2016-10-03 08:00 | 2016-10-03 11:12 | 56 | 0d |  | Bruno Arcelino; Eder Rocha | 6.4h | 222.6 |
| 112 | 1.5.1.2 | Teste da página inicial |  | 0.1d | 2016-10-03 11:12 | 2016-10-03 12:00 | 111 | 0d |  | Bruno Arcelino; Eder Rocha | 1.6h | 95.4 |
| 113 | 1.5.1.3 | Página de cadastro de cliente |  | 0.4d | 2016-10-03 13:00 | 2016-10-03 16:12 | 112 | 0d |  | Bruno Arcelino; Eder Rocha | 6.4h | 222.6 |
| 114 | 1.5.1.4 | Teste da página de cadastro de cliente |  | 0.1d | 2016-10-03 16:12 | 2016-10-03 17:00 | 113 | 0d |  | Bruno Arcelino; Eder Rocha | 1.6h | 95.4 |
| 115 | 1.5.1.5 | Página de cadastro de investidor |  | 0.4d | 2016-10-04 08:00 | 2016-10-04 11:12 | 114 | 0d |  | Bruno Arcelino; Eder Rocha | 6.4h | 222.6 |
| 116 | 1.5.1.6 | Teste da página de cadastro de investidor |  | 0.1d | 2016-10-04 11:12 | 2016-10-04 12:00 | 115 | 0d |  | Bruno Arcelino; Eder Rocha | 1.6h | 95.4 |
| 117 | 1.5.1.7 | Página de administradores |  | 0.4d | 2016-10-04 13:00 | 2016-10-04 16:12 | 116 | 0d |  | Bruno Arcelino; Eder Rocha | 6.4h | 222.6 |
| 118 | 1.5.1.8 | Teste da página de administradores |  | 0.1d | 2016-10-04 16:12 | 2016-10-04 17:00 | 117 | 0d |  | Bruno Arcelino; Eder Rocha | 1.6h | 95.4 |
| 119 | 1.5.1.9 | Página de Login |  | 0.2d | 2016-10-05 08:00 | 2016-10-05 09:36 | 118 | 0d |  | Bruno Arcelino; Eder Rocha | 3.2h | 137.8 |
| 120 | 1.5.1.10 | Teste da página de login |  | 0.1d | 2016-10-05 09:36 | 2016-10-05 10:24 | 119 | 0d |  | Bruno Arcelino; Eder Rocha | 1.6h | 95.4 |
| 121 | 1.5.1.11 | Página de relatório de clientes |  | 0.6d | 2016-10-05 10:24 | 2016-10-05 16:12 | 120 | 0d |  | Bruno Arcelino; Eder Rocha | 9.6h | 307.4 |
| 122 | 1.5.1.12 | Teste da página de relatório de clientes |  | 0.2d | 2016-10-05 16:12 | 2016-10-06 08:48 | 121 | 0d |  | Bruno Arcelino; Eder Rocha | 3.2h | 137.8 |
| 123 | 1.5.1.13 | Página de relatório de investimento |  | 0.6d | 2016-10-06 08:48 | 2016-10-06 14:36 | 122 | 0d |  | Bruno Arcelino; Eder Rocha | 9.6h | 307.4 |
| 124 | 1.5.1.14 | Teste da página de relatório de investimento |  | 0.2d | 2016-10-06 14:36 | 2016-10-06 16:12 | 123 | 0d |  | Bruno Arcelino; Eder Rocha; Mario Pereira Cicala | 4.8h | 189.8 |
| 125 | 1.5.1.15 | Programação do FrontEnt do site pronto | milestone | 0d | 2016-09-30 17:00 | 2016-09-30 17:00 |  | 3.9d |  |  |  |  |
| 126 | 1.5.2 | **Hospedagem da página** |  | 0.3d | 2016-09-30 17:00 | 2016-10-03 10:24 |  | 8.1d | 0d |  | 2.4h | 88 |
| 127 | 1.5.2.1 | Configuração do roteador |  | 0.1d | 2016-10-03 08:00 | 2016-10-03 08:48 | 56 | 8.1d | 0d | Robson Lisboa Pires | 0.8h | 36 |
| 128 | 1.5.2.2 | Liberação de firewall no roteador e no servidor |  | 0.2d | 2016-10-03 08:48 | 2016-10-03 10:24 | 127 | 8.1d |  | Robson Lisboa Pires | 1.6h | 52 |
| 129 | 1.5.2.3 | Hospedagem da página pronto | milestone | 0d | 2016-09-30 17:00 | 2016-09-30 17:00 |  | 8.4d |  |  |  |  |

| ID | WBS | Task | Type | Duration | Start | Finish | Predecessors | Total slack | Free slack | Resources | Work | Cost |
| --- | --- | --- | --- | --- | --- | --- | --- | --- | --- | --- | --- | --- |
| 130 | 1.5.3 | **Layout das telas do aplicativo** |  | 4.8d | 2016-09-30 17:00 | 2016-10-07 15:24 |  | 0d |  |  | 8.8h | 282 |
| 131 | 1.5.3.1 | Criação do design das telas |  | 0.7d | 2016-10-06 16:12 | 2016-10-07 13:48 | 110 | 0d |  | Eder Rocha | 5.6h | 165 |
| 132 | 1.5.3.2 | Validação de facilidade de navegação |  | 0.2d | 2016-10-07 13:48 | 2016-10-07 15:24 | 131 | 0d |  | Eder Rocha; Mario Pereira Cicala | 3.2h | 117 |
| 133 | 1.5.3.3 | Layout das telas do aplicativo pronto | milestone | 0d | 2016-09-30 17:00 | 2016-09-30 17:00 |  | 4.8d |  |  |  |  |
| 134 | 1.5.4 | **Aplicativo para android** |  | 8.5d | 2016-09-30 17:00 | 2016-10-13 12:00 |  | 0d |  |  | 59.2h | 2,045.8 |
| 135 | 1.5.4.1 | Programação das classes de entidade |  | 0.2d | 2016-10-07 15:24 | 2016-10-07 17:00 | 110, 130 | 0d |  | Bruno Arcelino; Eder Rocha | 3.2h | 137.8 |
| 136 | 1.5.4.2 | Testes de instanciamento de objetos |  | 0.1d | 2016-10-10 08:00 | 2016-10-10 08:48 | 135 | 0d |  | Bruno Arcelino; Eder Rocha | 1.6h | 95.4 |
| 137 | 1.5.4.3 | Programação das activities (telas) |  | 1.4d | 2016-10-10 08:48 | 2016-10-11 12:00 | 136 | 0d |  | Bruno Arcelino; Eder Rocha | 22.4h | 646.6 |
| 138 | 1.5.4.4 | Teste das activities |  | 0.5d | 2016-10-11 13:00 | 2016-10-11 17:00 | 137 | 0d |  | Bruno Arcelino; Eder Rocha | 8h | 265 |
| 139 | 1.5.4.5 | Programação da interface com Web Service (integração com site) |  | 0.6d | 2016-10-12 08:00 | 2016-10-12 13:48 | 138 | 0d |  | Bruno Arcelino; Eder Rocha | 9.6h | 307.4 |
| 140 | 1.5.4.6 | Testes de Web Service |  | 0.1d | 2016-10-12 13:48 | 2016-10-12 14:36 | 139 | 0d |  | Bruno Arcelino; Eder Rocha | 1.6h | 95.4 |
| 141 | 1.5.4.7 | Programação das classes de fronteira |  | 0.2d | 2016-10-12 14:36 | 2016-10-12 16:12 | 140 | 0d |  | Bruno Arcelino; Eder Rocha | 3.2h | 137.8 |
| 142 | 1.5.4.8 | Programação das classes de controle |  | 0.4d | 2016-10-12 16:12 | 2016-10-13 10:24 | 141 | 0d |  | Bruno Arcelino; Eder Rocha | 6.4h | 222.6 |
| 143 | 1.5.4.9 | Testes dos métodos das classes controle |  | 0.2d | 2016-10-13 10:24 | 2016-10-13 12:00 | 142 | 0d |  | Bruno Arcelino; Eder Rocha | 3.2h | 137.8 |
| 144 | 1.5.4.10 | Aplicativo para android pronto | milestone | 0d | 2016-09-30 17:00 | 2016-09-30 17:00 |  | 8.5d |  |  |  |  |
| 145 | 1.5.5 | **Publicação do aplicativo** |  | 8.9d | 2016-09-30 17:00 | 2016-10-13 16:12 |  | 1.1d |  |  | 5.6h | 225.2 |
| 146 | 1.5.5.1 | Testar aplicativos nas ultimas 5 versões do android |  | 0.3d | 2016-10-13 13:00 | 2016-10-13 15:24 | 134 | 1.1d | 0d | Bruno Arcelino; Eder Rocha | 4.8h | 180.2 |
| 147 | 1.5.5.2 | Publicar o aplicativo na Play Store |  | 0.1d | 2016-10-13 15:24 | 2016-10-13 16:12 | 146 | 1.1d |  | Eder Rocha | 0.8h | 45 |
| 148 | 1.5.5.3 | Publicação do aplicativo pronto | milestone | 0d | 2016-09-30 17:00 | 2016-09-30 17:00 |  | 10d |  |  |  |  |
| 149 | 1.5.6 | **Documentação da infra estrutura** |  | 1d | 2016-09-30 17:00 | 2016-10-03 17:00 |  | 8.1d | 0d |  | 5.6h | 172 |
| 150 | 1.5.6.1 | Documentar infra estrutura |  | 0.4d | 2016-10-03 10:24 | 2016-10-03 14:36 | 56, 126 | 8.1d | 0d | Robson Lisboa Pires | 3.2h | 84 |
| 151 | 1.5.6.2 | Verificar erros ortográficos |  | 0.2d | 2016-10-03 14:36 | 2016-10-03 16:12 | 150 | 8.1d | 0d | Robson Lisboa Pires | 1.6h | 52 |
| 152 | 1.5.6.3 | Formatar no padrão ABNT |  | 0.1d | 2016-10-03 16:12 | 2016-10-03 17:00 | 151 | 8.1d |  | Robson Lisboa Pires | 0.8h | 36 |
| 153 | 1.5.6.4 | Documentação da infra estrutura pronto | milestone | 0d | 2016-09-30 17:00 | 2016-09-30 17:00 |  | 9.1d |  |  |  |  |

| ID | WBS | Task | Type | Duration | Start | Finish | Predecessors | Total slack | Free slack | Resources | Work | Cost |
| --- | --- | --- | --- | --- | --- | --- | --- | --- | --- | --- | --- | --- |
| 154 | 1.5.7 | **Documentação da programação** |  | 10d | 2016-09-30 17:00 | 2016-10-14 17:00 |  | 0d |  |  | 20.8h | 829.6 |
| 155 | 1.5.7.1 | Documentar a UML |  | 0.1d | 2016-10-13 13:00 | 2016-10-13 13:48 | 134 | 0d |  | Mario Pereira Cicala | 0.8h | 36 |
| 156 | 1.5.7.2 | Documentar a estimativa do projeto por APF |  | 0.4d | 2016-10-13 13:48 | 2016-10-13 17:00 | 155 | 0d |  | Mario Pereira Cicala | 3.2h | 84 |
| 157 | 1.5.7.3 | Documentar a arquitetura dos componentes usando SOA |  | 0.2d | 2016-10-14 08:00 | 2016-10-14 09:36 | 156 | 0d |  | Mario Pereira Cicala | 1.6h | 52 |
| 158 | 1.5.7.4 | Documentar o código do site |  | 0.2d | 2016-10-14 09:36 | 2016-10-14 11:12 | 157 | 0d |  | Bruno Arcelino; Vinicius Cassiano; Mario Pereira Cicala | 4.8h | 171.6 |
| 159 | 1.5.7.5 | Documentar o código do aplicativo |  | 0.2d | 2016-10-14 11:12 | 2016-10-14 13:48 | 158 | 0d |  | Eder Rocha; Vinicius Cassiano; Mario Pereira Cicala | 4.8h | 163.8 |
| 160 | 1.5.7.6 | Inserir o design das páginas web na documentação |  | 0.05d | 2016-10-14 13:48 | 2016-10-14 14:12 | 159 | 0d |  | Eder Rocha; Mario Pereira Cicala | 0.8h | 63 |
| 161 | 1.5.7.7 | Inserir o design das telas do aplicativo na documentação |  | 0.05d | 2016-10-14 14:12 | 2016-10-14 14:36 | 160 | 0d |  | Eder Rocha; Mario Pereira Cicala | 0.8h | 63 |
| 162 | 1.5.7.8 | Documentar os roteiros de teste de software |  | 0.1d | 2016-10-14 14:36 | 2016-10-14 15:24 | 161 | 0d |  | Bruno Arcelino; Eder Rocha; Mario Pereira Cicala | 2.4h | 131.4 |
| 163 | 1.5.7.9 | Verificar erros ortográficos |  | 0.1d | 2016-10-14 15:24 | 2016-10-14 16:12 | 162 | 0d |  | Vinicius Cassiano | 0.8h | 32.4 |
| 164 | 1.5.7.10 | Formatar no padrão ABNT |  | 0.1d | 2016-10-14 16:12 | 2016-10-14 17:00 | 163 | 0d |  | Vinicius Cassiano | 0.8h | 32.4 |
| 165 | 1.5.7.11 | Documentação da programação pronto | milestone | 0d | 2016-09-30 17:00 | 2016-09-30 17:00 |  | 10d |  |  |  |  |
| 166 | 1.5.8 | **Documentação do device** |  | 1.9d | 2016-09-30 17:00 | 2016-10-04 16:12 |  | 8.1d |  |  | 7.2h | 244 |
| 167 | 1.5.8.1 | Descrever as especifidades do projeto device |  | 0.2d | 2016-10-04 08:00 | 2016-10-04 09:36 | 149 | 8.1d | 0d | Robson Lisboa Pires | 1.6h | 52 |
| 168 | 1.5.8.2 | Cotação de hardware para o device |  | 0.2d | 2016-10-04 09:36 | 2016-10-04 11:12 | 167 | 8.1d | 0d | Robson Lisboa Pires | 1.6h | 52 |
| 169 | 1.5.8.3 | Documentação do framework que fará integração com hardware (programação baixo nível) |  | 0.3d | 2016-10-04 11:12 | 2016-10-04 14:36 | 168 | 8.1d | 0d | Robson Lisboa Pires | 2.4h | 68 |
| 170 | 1.5.8.4 | Verificar erros ortográficos |  | 0.1d | 2016-10-04 14:36 | 2016-10-04 15:24 | 169 | 8.1d | 0d | Robson Lisboa Pires | 0.8h | 36 |
| 171 | 1.5.8.5 | Formatar no padrão ABNT |  | 0.1d | 2016-10-04 15:24 | 2016-10-04 16:12 | 170 | 8.1d |  | Robson Lisboa Pires | 0.8h | 36 |
| 172 | 1.5.8.6 | Documentação do device pronto | milestone | 0d | 2016-09-30 17:00 | 2016-09-30 17:00 |  | 10d |  |  |  |  |
| 173 | 1.5.9 | **Report Gerencial Semanal** |  | 0d | 2016-09-30 17:00 | 2016-09-30 17:00 |  | 10d |  |  |  | 108 |
| 174 | 1.5.9.1 | **Reporte semana 1** |  | 0d | 2016-09-30 17:00 | 2016-09-30 17:00 |  | 10d | 0d |  |  | 54 |
| 175 | 1.5.9.1.1 | Coletar dados de Burndown e KANBAN do projeto | milestone | 0d | 2016-09-30 17:00 | 2016-09-30 17:00 | 56 | 10d | 0d | Vinicius Cassiano |  | 18 |
| 176 | 1.5.9.1.2 | Elaborar status report | milestone | 0d | 2016-09-30 17:00 | 2016-09-30 17:00 | 175 | 10d | 0d | Vinicius Cassiano |  | 18 |
| 177 | 1.5.9.1.3 | Realizar reunião com stakeholders | milestone | 0d | 2016-09-30 17:00 | 2016-09-30 17:00 | 176 | 10d | 0d | Vinicius Cassiano |  | 18 |
| 178 | 1.5.9.1.4 | Ata da reunião gerencial | milestone | 0d | 2016-09-30 17:00 | 2016-09-30 17:00 | 177 | 10d |  |  |  |  |

| ID | WBS | Task | Type | Duration | Start | Finish | Predecessors | Total slack | Free slack | Resources | Work | Cost |
| --- | --- | --- | --- | --- | --- | --- | --- | --- | --- | --- | --- | --- |
| 179 | 1.5.9.2 | **Reporte semana 2** |  | 0d | 2016-09-30 17:00 | 2016-09-30 17:00 |  | 10d |  |  |  | 54 |
| 180 | 1.5.9.2.1 | Coletar dados de Burndown e KANBAN do projeto | milestone | 0d | 2016-09-30 17:00 | 2016-09-30 17:00 | 174 | 10d | 0d | Vinicius Cassiano |  | 18 |
| 181 | 1.5.9.2.2 | Elaborar status report | milestone | 0d | 2016-09-30 17:00 | 2016-09-30 17:00 | 180 | 10d | 0d | Vinicius Cassiano |  | 18 |
| 182 | 1.5.9.2.3 | Realizar reunião com stakeholders | milestone | 0d | 2016-09-30 17:00 | 2016-09-30 17:00 | 181 | 10d | 0d | Vinicius Cassiano |  | 18 |
| 183 | 1.5.9.2.4 | Ata da reunião gerencial | milestone | 0d | 2016-09-30 17:00 | 2016-09-30 17:00 | 182 | 10d |  |  |  |  |
| 184 | 1.6 | **Encerramento do projeto** |  | 5d | 2016-10-17 08:00 | 2016-10-21 17:00 | 109 | 0d |  |  | 200h | 4,662 |
| 185 | 1.6.1 | Formalizar encerramento do projeto |  | 2d | 2016-10-17 08:00 | 2016-10-18 17:00 | 109 | 0d |  | Bruno Arcelino; Eder Rocha; Mario Pereira Cicala; Robson Lisboa Pires; Vinicius Cassiano | 80h | 1,887 |
| 186 | 1.6.2 | Termo de encerramento assinado |  | 3d | 2016-10-19 08:00 | 2016-10-21 17:00 | 185 | 0d |  | Bruno Arcelino; Eder Rocha; Mario Pereira Cicala; Robson Lisboa Pires; Vinicius Cassiano | 120h | 2,775 |
| 187 | 1.6.3 | Projeto encerrado | milestone | 0d | 2016-10-21 17:00 | 2016-10-21 17:00 | 186 | 0d |  |  |  |  |
